# Construction schedule v1.0

Schedule from an IFC model, 2027-03-01 to 2028-01-12.
New-Build Canal House, Amsterdam

## Schedule

| ID | Activity | Type | Duration | Start | Finish | Predecessors | Planned start | Planned finish | Total float | Free float | Resources |
| --- | --- | --- | --- | --- | --- | --- | --- | --- | --- | --- | --- |
| 1 | **1. Preparation** |  | 24d | 2027-03-01 | 2027-04-05 |  | 2027-03-01 | 2027-03-05 | 0d |  |  |
| 1.1 | Set up site |  | 5d | 2027-03-01 | 2027-03-05 |  |  |  | 0d |  |  |
| 1.2 | Install sheet piling |  | 10d | 2027-03-08 | 2027-03-19 | 1.1 | 2027-03-01 | 2027-03-12 | 183d | 0d | Piling contractor |
| 1.3 | Install dewatering |  | 5d | 2027-03-22 | 2027-03-30 | 1.2 | 2027-03-01 | 2027-03-05 | 183d | 0d |  |
| 1.4 | Carry out soil investigation |  | 3d | 2027-03-31 | 2027-04-02 | 1.3 | 2027-03-01 | 2027-03-03 | 183d | 0d |  |
| 1.5 | Start of construction | milestone | 0d | 2027-04-05 | 2027-04-05 | 1.4 | 2027-03-01 | 2027-03-01 | 183d |  |  |
| 2 | **2. Foundations & basement** |  | 58d | 2027-03-17 | 2027-06-14 |  | 2027-03-01 | 2027-03-05 | 0d |  |  |
| 2.1 | Excavate building pit |  | 10d | 2027-03-17 | 2027-04-01 | 1.1 SS+12d | 2027-03-01 | 2027-03-12 | 0d |  |  |
| 2.2 | Drive foundation piles |  | 15d | 2027-04-02 | 2027-04-22 | 2.1 | 2027-03-01 | 2027-03-19 | 137d | 0d | Piling contractor |
| 2.3 | Rebar fixing, basement |  | 8d | 2027-04-23 | 2027-05-07 | 2.2 | 2027-03-01 | 2027-03-10 | 137d | 0d |  |
| 2.4 | Pour basement floor |  | 5d | 2027-05-10 | 2027-05-14 | 2.3 | 2027-03-01 | 2027-03-05 | 137d | 0d | Concrete C20/25 |
| 2.5 | Pour basement walls |  | 10d | 2027-05-18 | 2027-05-31 | 2.4 | 2027-03-01 | 2027-03-12 | 137d | 0d | Concrete C20/25 |
| 2.6 | Basement waterproofing |  | 5d | 2027-06-01 | 2027-06-07 | 2.5 | 2027-03-01 | 2027-03-05 | 137d | 0d |  |
| 2.7 | Backfill building pit |  | 5d | 2027-06-08 | 2027-06-14 | 2.6 | 2027-03-01 | 2027-03-05 | 137d |  |  |
| 3 | **3. Structural works** |  | 73d | 2027-03-23 | 2027-07-09 |  | 2027-03-01 | 2027-03-05 | 0d |  |  |
| 3.1 | Ground floor masonry |  | 12d | 2027-03-23 | 2027-04-09 | 2.1 SS | 2027-03-01 | 2027-03-16 | 0d |  | Restoration bricklayers |
| 3.2 | First floor slab |  | 5d | 2027-04-12 | 2027-04-16 | 3.1 | 2027-03-01 | 2027-03-05 | 0d |  | Mobile crane |
| 3.3 | First floor masonry |  | 10d | 2027-04-19 | 2027-05-03 | 3.2 | 2027-03-01 | 2027-03-12 | 0d |  | Restoration bricklayers |
| 3.4 | Second floor slab |  | 5d | 2027-05-04 | 2027-05-12 | 3.3 | 2027-03-01 | 2027-03-05 | 0d |  | Mobile crane |
| 3.5 | Second floor masonry |  | 10d | 2027-05-13 | 2027-05-27 | 3.4 | 2027-03-01 | 2027-03-12 | 0d |  | Restoration bricklayers |
| 3.6 | Third floor slab |  | 5d | 2027-05-28 | 2027-06-03 | 3.5 | 2027-03-01 | 2027-03-05 | 0d |  | Mobile crane |
| 3.7 | Third floor masonry |  | 8d | 2027-06-04 | 2027-06-15 | 3.6 | 2027-03-01 | 2027-03-10 | 0d |  | Restoration bricklayers |
| 3.8 | Timber roof structure |  | 10d | 2027-06-16 | 2027-06-29 | 3.7 | 2027-03-01 | 2027-03-12 | 0d |  | Carpenters; Mobile crane |
| 3.9 | Roofing |  | 8d | 2027-06-30 | 2027-07-09 | 3.8 | 2027-03-01 | 2027-03-10 | 0d |  | Carpenters |
| 3.10 | Topping out | milestone | 0d | 2027-07-09 | 2027-07-09 | 3.9 | 2027-03-01 | 2027-03-01 | 118d |  |  |

| ID | Activity | Type | Duration | Start | Finish | Predecessors | Planned start | Planned finish | Total float | Free float | Resources |
| --- | --- | --- | --- | --- | --- | --- | --- | --- | --- | --- | --- |
| 4 | **4. Facade & roof** |  | 38d | 2027-06-21 | 2027-09-01 |  | 2027-03-01 | 2027-03-05 | 0d |  |  |
| 4.1 | Facade insulation |  | 8d | 2027-06-21 | 2027-06-30 | 3.9 FS-15d | 2027-03-01 | 2027-03-10 | 0d |  |  |
| 4.2 | Natural stone cladding |  | 15d | 2027-07-01 | 2027-07-21 | 4.1 | 2027-03-01 | 2027-03-19 | 0d |  |  |
| 4.3 | Install window frames |  | 10d | 2027-07-22 | 2027-08-25 | 4.2 | 2027-03-01 | 2027-03-12 | 0d |  | Carpenters |
| 4.4 | Glazing |  | 5d | 2027-08-26 | 2027-09-01 | 4.3, 3.9 FF+2d | 2027-03-01 | 2027-03-05 | 0d |  |  |
| 4.5 | Wind and weathertight | milestone | 0d | 2027-09-01 | 2027-09-01 | 4.4 | 2027-03-01 | 2027-03-01 | 95d |  |  |
| 5 | **5. Building services** |  | 36d | 2027-09-02 | 2027-10-21 |  | 2027-03-01 | 2027-03-05 | 0d |  |  |
| 5.1 | Electrical first fix |  | 10d | 2027-09-02 | 2027-09-15 | 4.4 | 2027-03-01 | 2027-03-12 | 0d |  |  |
| 5.2 | Plumbing first fix |  | 8d | 2027-09-16 | 2027-09-27 | 5.1 | 2027-03-01 | 2027-03-10 | 59d | 0d |  |
| 5.3 | Heating installation |  | 10d | 2027-09-21 | 2027-10-04 | 5.2 SS+3d | 2027-03-01 | 2027-03-12 | 59d | 0d |  |
| 5.4 | Ventilation system |  | 8d | 2027-10-05 | 2027-10-14 | 5.3 | 2027-03-01 | 2027-03-10 | 59d | 0d |  |
| 5.5 | Home automation cabling |  | 5d | 2027-10-15 | 2027-10-21 | 5.4 | 2027-03-01 | 2027-03-05 | 59d |  |  |
| 6 | **6. Fit-out** |  | 63d | 2027-10-01 | 2027-12-28 |  | 2027-03-01 | 2027-03-05 | 0d |  |  |
| 6.1 | Internal walls |  | 10d | 2027-10-01 | 2027-10-14 | 5.1 SS+21d | 2027-03-01 | 2027-03-12 | 0d |  |  |
| 6.2 | Plastering |  | 12d | 2027-10-15 | 2027-11-01 | 6.1 | 2027-03-01 | 2027-03-16 | 0d |  | Plasterers |
| 6.3 | Bathroom tiling |  | 8d | 2027-11-02 | 2027-11-11 | 6.2 | 2027-03-01 | 2027-03-10 | 0d |  |  |
| 6.4 | Screed floors |  | 5d | 2027-11-12 | 2027-11-18 | 6.3 | 2027-03-01 | 2027-03-05 | 0d |  |  |
| 6.5 | Painting |  | 10d | 2027-11-19 | 2027-12-02 | 6.4 | 2027-03-01 | 2027-03-12 | 0d |  |  |
| 6.6 | Install kitchen |  | 5d | 2027-12-03 | 2027-12-09 | 6.5 | 2027-03-01 | 2027-03-05 | 0d |  |  |
| 6.7 | Second-fix sanitary fittings |  | 5d | 2027-12-10 | 2027-12-16 | 6.6 | 2027-03-01 | 2027-03-05 | 0d |  |  |
| 6.8 | Floor finishes |  | 8d | 2027-12-17 | 2027-12-28 | 6.7 | 2027-03-01 | 2027-03-10 | 0d |  |  |
| 7 | **7. Handover** |  | 11d | 2027-12-29 | 2028-01-12 |  | 2027-03-01 | 2027-03-05 | 0d |  |  |
| 7.1 | Construct outdoor areas |  | 5d | 2027-12-29 | 2028-01-04 | 6.8 | 2027-03-01 | 2027-03-05 | 0d |  |  |
| 7.2 | Cleaning |  | 3d | 2028-01-05 | 2028-01-07 | 7.1 | 2027-03-01 | 2027-03-03 | 0d |  |  |
| 7.3 | Final inspection of services |  | 3d | 2028-01-10 | 2028-01-12 | 7.2 | 2027-03-01 | 2027-03-03 | 0d |  |  |
| 7.4 | Handover | milestone | 0d | 2028-01-12 | 2028-01-12 | 7.3 | 2027-03-01 | 2027-03-01 | 0d |  |  |
