# Construction schedule v1.0

Schedule from an IFC model, 2027-03-01 to 2028-03-15.
24 Apartments, Eindhoven

## Schedule

| ID | Activity | Type | Duration | Start | Finish | Predecessors | Planned start | Planned finish | Total float | Free float |
| --- | --- | --- | --- | --- | --- | --- | --- | --- | --- | --- |
| 1 | **1. Preparation** |  | 17d | 2027-03-01 | 2027-03-23 |  | 2027-03-01 | 2027-03-05 | 0d |  |
| 1.1 | Set up site |  | 5d | 2027-03-01 | 2027-03-05 |  |  |  | 0d |  |
| 1.2 | Pile load test |  | 3d | 2027-03-08 | 2027-03-10 | 1.1 | 2027-03-01 | 2027-03-03 | 235d | 0d |
| 1.3 | Divert utilities |  | 8d | 2027-03-11 | 2027-03-22 | 1.2 | 2027-03-01 | 2027-03-10 | 235d | 0d |
| 1.4 | Start of construction | milestone | 0d | 2027-03-23 | 2027-03-23 | 1.3 | 2027-03-01 | 2027-03-01 | 235d |  |
| 2 | **2. Foundations** |  | 51d | 2027-03-11 | 2027-05-28 |  | 2027-03-01 | 2027-03-05 | 0d |  |
| 2.1 | Pile driving, foundation piles |  | 15d | 2027-03-11 | 2027-04-02 | 1.1 SS+8d | 2027-03-01 | 2027-03-19 | 0d |  |
| 2.2 | Earthworks, basement car park |  | 10d | 2027-04-05 | 2027-04-16 | 2.1 | 2027-03-01 | 2027-03-12 | 193d | 0d |
| 2.3 | Foundation beams and pile caps |  | 8d | 2027-04-19 | 2027-04-29 | 2.2 | 2027-03-01 | 2027-03-10 | 193d | 0d |
| 2.4 | Pour basement floor |  | 5d | 2027-04-30 | 2027-05-10 | 2.3 | 2027-03-01 | 2027-03-05 | 193d | 0d |
| 2.5 | Basement walls |  | 8d | 2027-05-11 | 2027-05-21 | 2.4 | 2027-03-01 | 2027-03-10 | 193d | 0d |
| 2.6 | Waterproofing |  | 5d | 2027-05-24 | 2027-05-28 | 2.5 | 2027-03-01 | 2027-03-05 | 193d |  |
| 3 | **3. Structural works** |  | 100d | 2027-03-19 | 2027-09-03 |  | 2027-03-01 | 2027-03-05 | 0d |  |
| 3.1 | Ground floor walls and slab |  | 12d | 2027-03-19 | 2027-04-07 | 2.1 SS | 2027-03-01 | 2027-03-16 | 0d |  |
| 3.2 | First floor concrete |  | 10d | 2027-04-08 | 2027-04-21 | 3.1 | 2027-03-01 | 2027-03-12 | 0d |  |
| 3.3 | Second floor concrete |  | 10d | 2027-04-22 | 2027-05-10 | 3.2 | 2027-03-01 | 2027-03-12 | 0d |  |
| 3.4 | Third floor concrete |  | 10d | 2027-05-11 | 2027-05-25 | 3.3 | 2027-03-01 | 2027-03-12 | 0d |  |
| 3.5 | Fourth floor concrete |  | 10d | 2027-05-26 | 2027-06-08 | 3.4 | 2027-03-01 | 2027-03-12 | 0d |  |
| 3.6 | Concrete stair core |  | 15d | 2027-06-02 | 2027-06-22 | 3.5 SS+5d | 2027-03-01 | 2027-03-19 | 0d |  |
| 3.7 | Roof build-up |  | 8d | 2027-06-23 | 2027-07-02 | 3.6 | 2027-03-01 | 2027-03-10 | 0d |  |
| 3.8 | Balcony structures |  | 10d | 2027-07-05 | 2027-07-16 | 3.7 | 2027-03-01 | 2027-03-12 | 0d |  |
| 3.9 | Facade masonry |  | 20d | 2027-07-19 | 2027-09-03 | 3.8 | 2027-03-01 | 2027-03-26 | 0d |  |
| 3.10 | Topping out | milestone | 0d | 2027-09-03 | 2027-09-03 | 3.9 | 2027-03-01 | 2027-03-01 | 138d |  |
| 4 | **4. Facade & roof** |  | 35d | 2027-07-16 | 2027-09-23 |  | 2027-03-01 | 2027-03-05 | 0d |  |
| 4.1 | Facade insulation |  | 12d | 2027-07-16 | 2027-08-23 | 3.9 FS-21d | 2027-03-01 | 2027-03-16 | 0d |  |
| 4.2 | Window frames and glazing |  | 10d | 2027-08-24 | 2027-09-06 | 4.1 | 2027-03-01 | 2027-03-12 | 0d |  |
| 4.3 | Roofing and insulation |  | 8d | 2027-09-07 | 2027-09-16 | 4.2 | 2027-03-01 | 2027-03-10 | 0d |  |
| 4.4 | Balcony balustrades |  | 5d | 2027-09-17 | 2027-09-23 | 4.3, 3.9 FF+2d | 2027-03-01 | 2027-03-05 | 0d |  |
| 4.5 | Wind and weathertight | milestone | 0d | 2027-09-23 | 2027-09-23 | 4.4 | 2027-03-01 | 2027-03-01 | 124d |  |

| ID | Activity | Type | Duration | Start | Finish | Predecessors | Planned start | Planned finish | Total float | Free float |
| --- | --- | --- | --- | --- | --- | --- | --- | --- | --- | --- |
| 5 | **5. Building services** |  | 53d | 2027-09-24 | 2027-12-07 |  | 2027-03-01 | 2027-03-05 | 0d |  |
| 5.1 | Electrical risers |  | 10d | 2027-09-24 | 2027-10-07 | 4.4 | 2027-03-01 | 2027-03-12 | 0d |  |
| 5.2 | Plumbing risers |  | 10d | 2027-09-29 | 2027-10-12 | 5.1 SS+3d | 2027-03-01 | 2027-03-12 | 71d | 0d |
| 5.3 | Heating pipework per dwelling |  | 12d | 2027-10-13 | 2027-10-28 | 5.2 | 2027-03-01 | 2027-03-16 | 71d | 0d |
| 5.4 | Heat recovery ventilation units |  | 8d | 2027-10-29 | 2027-11-09 | 5.3 | 2027-03-01 | 2027-03-10 | 71d | 0d |
| 5.5 | Lift installation |  | 15d | 2027-11-10 | 2027-11-30 | 5.4 | 2027-03-01 | 2027-03-19 | 71d | 0d |
| 5.6 | Intercom and access control |  | 5d | 2027-12-01 | 2027-12-07 | 5.5 | 2027-03-01 | 2027-03-05 | 71d |  |
| 6 | **6. Fit-out** |  | 71d | 2027-11-05 | 2028-02-11 |  | 2027-03-01 | 2027-03-05 | 0d |  |
| 6.1 | Set out internal walls |  | 10d | 2027-11-05 | 2027-11-18 | 5.1 SS+30d | 2027-03-01 | 2027-03-12 | 0d |  |
| 6.2 | Plastering |  | 12d | 2027-11-19 | 2027-12-06 | 6.1 | 2027-03-01 | 2027-03-16 | 0d |  |
| 6.3 | Tiling |  | 10d | 2027-12-07 | 2027-12-20 | 6.2 | 2027-03-01 | 2027-03-12 | 0d |  |
| 6.4 | Screed floors |  | 8d | 2027-12-21 | 2027-12-30 | 6.3 | 2027-03-01 | 2027-03-10 | 0d |  |
| 6.5 | Internal doors |  | 5d | 2027-12-31 | 2028-01-06 | 6.4 | 2027-03-01 | 2027-03-05 | 0d |  |
| 6.6 | Kitchen units installation |  | 8d | 2028-01-07 | 2028-01-18 | 6.5 | 2027-03-01 | 2027-03-10 | 0d |  |
| 6.7 | Painting |  | 10d | 2028-01-19 | 2028-02-01 | 6.6 | 2027-03-01 | 2027-03-12 | 0d |  |
| 6.8 | Floor finishes |  | 8d | 2028-02-02 | 2028-02-11 | 6.7 | 2027-03-01 | 2027-03-10 | 0d |  |
| 7 | **7. Handover** |  | 23d | 2028-02-14 | 2028-03-15 |  | 2027-03-01 | 2027-03-05 | 0d |  |
| 7.1 | Site paving |  | 8d | 2028-02-14 | 2028-02-23 | 6.8 | 2027-03-01 | 2027-03-10 | 0d |  |
| 7.2 | Landscaping |  | 5d | 2028-02-24 | 2028-03-01 | 7.1 | 2027-03-01 | 2027-03-05 | 0d |  |
| 7.3 | Cleaning |  | 5d | 2028-03-02 | 2028-03-08 | 7.2 | 2027-03-01 | 2027-03-05 | 0d |  |
| 7.4 | Pre-handover inspection, dwellings |  | 5d | 2028-03-09 | 2028-03-15 | 7.3 | 2027-03-01 | 2027-03-05 | 0d |  |
| 7.5 | Handover | milestone | 0d | 2028-03-15 | 2028-03-15 | 7.4 | 2027-03-01 | 2027-03-01 | 0d |  |
